# Сайт IT компании

How a schedule from MS Project changed from version to version. A marks actual dates.

## Version 1 (saved 2026-03-02, file РС2А.mpp)

| ID | WBS | Task | Duration | Start | Finish | Predecessors | Total float |
| --- | --- | --- | --- | --- | --- | --- | --- |
| 1 | 1 | **РАЗРАБОТКА САЙТА Калякин** | 177d | 2021-03-01 | 2021-11-09 |  | 0d |
| 2 |  | НАЧАЛО РАБОТ | 0d | 2021-03-01 | 2021-03-01 |  | 0d |
| 3 | 1.2 | **ЭТАП I. ПРЕДПРОЕКТНОЕ ИССЛЕДОВАНИЕ** | 62d | 2021-03-01 | 2021-05-28 | 2 | 0d |
| 4 |  | Разработать план работ по проекту | 20d | 2021-03-01 | 2021-03-29 |  | 0d |
| 5 |  | Разработать предварительный бюджет | 3d | 2021-03-01 | 2021-03-03 |  | 17d |
| 6 |  | Сформировать команду проекта | 5d | 2021-03-01 | 2021-03-05 |  | 15d |
| 7 | 1.2.4 | **Анализ сайтов конкурентов** | 25d | 2021-03-30 | 2021-05-04 | 4, 5, 6 | 0d |
| 8 |  | Сайт 1 | 18d | 2021-03-30 | 2021-04-22 |  | 7d |
| 9 |  | Сайт 2 | 10d | 2021-03-30 | 2021-04-12 |  | 15d |
| 10 |  | Сайт 3 | 20d | 2021-03-30 | 2021-04-26 |  | 5d |
| 11 |  | Сайт 4 | 15d | 2021-03-30 | 2021-04-19 |  | 10d |
| 12 |  | Сайт 5 | 25d | 2021-03-30 | 2021-05-04 |  | 0d |
| 13 |  | Разработать модель as-is | 5d | 2021-05-05 | 2021-05-12 | 7 | 0d |
| 14 |  | Сформировать требования к сайту | 10d | 2021-05-13 | 2021-05-26 | 13 | 0d |
| 15 |  | Утвердить документы и внести в библиотеку проекта | 2d | 2021-05-27 | 2021-05-28 | 14 | 0d |
| 16 |  | КОНЕЦ I ЭТАПА | 0d | 2021-05-28 | 2021-05-28 | 3 | 0d |
| 17 | 1.4 | **ЭТАП II. ПРОЕКТИРОВАНИЕ САЙТА** | 19d | 2021-05-31 | 2021-06-25 | 16 | 0d |
| 18 |  | Разработать техническое задание | 7d | 2021-05-31 | 2021-06-08 |  | 0d |
| 19 |  | Разработать структуры сайта | 10d | 2021-06-09 | 2021-06-23 | 18 | 0d |
| 20 |  | Утвердить документы и внести в библиотеку проекта | 2d | 2021-06-24 | 2021-06-25 | 19 | 0d |
| 21 |  | КОНЕЦ II ЭТАПА | 0d | 2021-06-25 | 2021-06-25 | 17 | 0d |
| 22 | 1.6 | **ЭТАП III. РАЗРАБОТКА САЙТА** | 42d | 2021-06-28 | 2021-08-24 | 21 | 0d |
| 23 |  | Разработать рабочую документацию | 15d | 2021-06-28 | 2021-07-16 |  | 0d |
| 24 |  | Веб-дизайн сайта | 5d | 2021-07-19 | 2021-07-23 | 23 | 0d |
| 25 |  | Верстка страниц сайта | 20d | 2021-07-26 | 2021-08-20 | 24 | 0d |
| 26 |  | Программирование сайта | 15d | 2021-07-26 | 2021-08-13 | 24 | 5d |
| 27 |  | Тестирование и отладка | 2d | 2021-08-23 | 2021-08-24 | 26, 25 | 0d |
| 28 |  | КОНЕЦ III ЭТАПА | 0d | 2021-08-24 | 2021-08-24 | 22 | 0d |
| 29 | 1.8 | **ЭТАП IV. ЗАПУСК САЙТА В ЭКСПЛУАТАЦИЮ** | 32d | 2021-08-25 | 2021-10-07 | 28 | 0d |
| 30 |  | Создание контента | 30d | 2021-08-25 | 2021-10-05 |  | 0d |
| 31 |  | SEO-оптимизация | 5d | 2021-08-25 | 2021-08-31 |  | 25d |
| 32 |  | Утверждение документации | 2d | 2021-10-06 | 2021-10-07 | 30, 31 | 0d |
| 33 |  | КОНЕЦ IV ЭТАПА | 0d | 2021-10-07 | 2021-10-07 | 29 | 0d |
| 34 | 1.10 | **ЭТАП V. СОПРОВОЖДЕНИЕ САЙТА** | 22d | 2021-10-08 | 2021-11-09 | 33 | 0d |
| 35 |  | Провести работы по доработке и устранению недостатков сайта | 15d | 2021-10-08 | 2021-10-28 |  | 5d |
| 36 |  | Провести работы по анализу сайта | 20d | 2021-10-08 | 2021-11-05 |  | 0d |
| 37 |  | Утверждение документации | 2d | 2021-11-08 | 2021-11-09 | 35, 36 | 0d |
| 38 |  | КОНЕЦ V ЭТАПА | 0d | 2021-11-09 | 2021-11-09 | 34 | 0d |
| 39 |  | ЗАВЕРШЕНИЕ РАБОТ | 0d | 2021-11-09 | 2021-11-09 | 38 | 0d |

## Version 2 (saved 2026-03-02, file РС2Б.mpp)

Last finish stays 2021-11-09.

Changed:

| ID | Task | Predecessors |
| --- | --- | --- |
| 8 | Сайт 1 | none → 4, 5, 6 |
| 9 | Сайт 2 | none → 4, 5, 6 |
| 10 | Сайт 3 | none → 4, 5, 6 |
| 11 | Сайт 4 | none → 4, 5, 6 |
| 12 | Сайт 5 | none → 4, 5, 6 |
| 13 | Разработать модель as-is | 7 → 8, 9, 10, 11, 12 |
| 16 | КОНЕЦ I ЭТАПА | 3 → 15 |
| 17 | **ЭТАП II. ПРОЕКТИРОВАНИЕ САЙТА** | 16 → none |
| 18 | Разработать техническое задание | none → 16 |
| 21 | КОНЕЦ II ЭТАПА | 17 → 20 |
| 22 | **ЭТАП III. РАЗРАБОТКА САЙТА** | 21 → none |
| 23 | Разработать рабочую документацию | none → 21 |
| 28 | КОНЕЦ III ЭТАПА | 22 → 27 |
| 29 | **ЭТАП IV. ЗАПУСК САЙТА В ЭКСПЛУАТАЦИЮ** | 28 → none |
| 30 | Создание контента | none → 28 |
| 31 | SEO-оптимизация | none → 28 |
| 33 | КОНЕЦ IV ЭТАПА | 29 → 32 |
| 35 | Провести работы по доработке и устранению недостатков сайта | none → 33 |
| 36 | Провести работы по анализу сайта | none → 33 |
| 38 | КОНЕЦ V ЭТАПА | 34 → 37 |

## Version 3 (saved 2026-03-03, file РС3А.mpp)

Last finish 2021-11-09 → 2021-08-09 (-92d).

Changed:

| ID | Task | Start | Finish | Duration | Total float | Other |
| --- | --- | --- | --- | --- | --- | --- |
| 1 | **РАЗРАБОТКА САЙТА Калякин** |  | 2021-11-09 → 2021-08-09 (-92d) | 177d → 111.44d |  | resources none → Генеральный спонсор; Канцелярия [2000%]; Компьютеры [1500%]; Расходные материалы [1000%] |
| 3 | **ЭТАП I. ПРЕДПРОЕКТНОЕ ИССЛЕДОВАНИЕ** |  | 2021-05-28 → 2021-04-22 (-36d) | 62d → 37.5d |  | resources none → Руководитель проекта от Исполнителя; Руководитель проекта от Заказчика; Секретарь |
| 5 | Разработать предварительный бюджет |  | 2021-03-03 → 2021-03-05 (+2d) | 3d → 4.38d | 17d → 15.5d | resources none → Бухгалтер |
| 7 | **Анализ сайтов конкурентов** |  | 2021-05-04 → 2021-04-12 (-22d) | 25d → 10d |  |  |
| 8 | Сайт 1 |  | 2021-04-22 → 2021-04-09 (-13d) | 18d → 9d | 7d → 1d | resources none → Маркетолог [200%] |
| 9 | Сайт 2 |  | 2021-04-12 → 2021-04-02 (-10d) | 10d → 3.33d | 15d → 6.67d | resources none → Маркетолог [300%] |
| 10 | Сайт 3 |  | 2021-04-26 → 2021-04-06 (-20d) | 20d → 5.71d | 5d → 4.29d | resources none → Маркетолог [350%] |
| 11 | Сайт 4 |  | 2021-04-19 → 2021-04-02 (-17d) | 15d → 3.75d | 10d → 6.25d | resources none → Маркетолог [400%] |
| 12 | Сайт 5 |  | 2021-05-04 → 2021-04-12 (-22d) | 25d → 10d |  | resources none → Маркетолог [250%] |
| 13 | Разработать модель as-is | 2021-05-05 → 2021-04-13 (-22d) | 2021-05-12 → 2021-04-15 (-27d) | 5d → 3d |  | resources none → Маркетолог [400%]; SEO-специалист [200%] |
| 14 | Сформировать требования к сайту | 2021-05-13 → 2021-04-16 (-27d) | 2021-05-26 → 2021-04-20 (-36d) | 10d → 2.5d |  | resources none → Маркетолог [400%] |
| 15 | Утвердить документы и внести в библиотеку проекта | 2021-05-27 → 2021-04-20 (-37d) | 2021-05-28 → 2021-04-22 (-36d) |  |  | resources none → Маркетолог [50%]; Бухгалтер [50%] |
| 16 | КОНЕЦ I ЭТАПА | 2021-05-28 → 2021-04-22 (-36d) | 2021-05-28 → 2021-04-22 (-36d) |  |  |  |
| 17 | **ЭТАП II. ПРОЕКТИРОВАНИЕ САЙТА** | 2021-05-31 → 2021-04-22 (-39d) | 2021-06-25 → 2021-05-07 (-49d) | 19d → 10d |  | resources none → Руководитель проекта от Исполнителя; Руководитель проекта от Заказчика; Секретарь |
| 18 | Разработать техническое задание | 2021-05-31 → 2021-04-22 (-39d) | 2021-06-08 → 2021-04-27 (-42d) | 7d → 3d |  | resources none → Маркетолог [400%]; SEO-специалист [200%] |
| 19 | Разработать структуры сайта | 2021-06-09 → 2021-04-27 (-43d) | 2021-06-23 → 2021-05-05 (-49d) | 10d → 5d |  | resources none → Маркетолог [200%] |
| 20 | Утвердить документы и внести в библиотеку проекта | 2021-06-24 → 2021-05-05 (-50d) | 2021-06-25 → 2021-05-07 (-49d) |  |  | resources none → Маркетолог |
| 21 | КОНЕЦ II ЭТАПА | 2021-06-25 → 2021-05-07 (-49d) | 2021-06-25 → 2021-05-07 (-49d) |  |  |  |
| 22 | **ЭТАП III. РАЗРАБОТКА САЙТА** | 2021-06-28 → 2021-05-07 (-52d) | 2021-08-24 → 2021-06-02 (-83d) | 42d → 17.44d |  | resources none → Руководитель проекта от Заказчика; Руководитель проекта от Исполнителя; Секретарь |
| 23 | Разработать рабочую документацию | 2021-06-28 → 2021-05-07 (-52d) | 2021-07-16 → 2021-05-24 (-53d) | 15d → 10d |  | resources none → SEO-специалист [200%] |
| 24 | Веб-дизайн сайта | 2021-07-19 → 2021-05-24 (-56d) | 2021-07-23 → 2021-05-25 (-59d) | 5d → 1.25d |  | resources none → Маркетолог [300%]; Верстальщик; Бухгалтер |
| 25 | Верстка страниц сайта | 2021-07-26 → 2021-05-25 (-62d) | 2021-08-20 → 2021-05-31 (-81d) | 20d → 3.64d | 0d → 0.81d | resources none → Маркетолог [350%]; Верстальщик; Программист [200%] |
| 26 | Программирование сайта | 2021-07-26 → 2021-05-25 (-62d) | 2021-08-13 → 2021-05-31 (-74d) | 15d → 4.44d | 5d → 0d | resources none → Маркетолог [250%]; Верстальщик; Программист [200%] |
| 27 | Тестирование и отладка | 2021-08-23 → 2021-05-31 (-84d) | 2021-08-24 → 2021-06-02 (-83d) |  |  | resources none → Верстальщик; Маркетолог |
| 28 | КОНЕЦ III ЭТАПА | 2021-08-24 → 2021-06-02 (-83d) | 2021-08-24 → 2021-06-02 (-83d) |  |  |  |
| 29 | **ЭТАП IV. ЗАПУСК САЙТА В ЭКСПЛУАТАЦИЮ** | 2021-08-25 → 2021-06-02 (-84d) | 2021-10-07 → 2021-07-19 (-80d) |  |  | resources none → Руководитель проекта от Заказчика; Руководитель проекта от Исполнителя; Секретарь |
| 30 | Создание контента | 2021-08-25 → 2021-06-02 (-84d) | 2021-10-05 → 2021-07-15 (-82d) |  |  | resources none → Маркетолог [200%]; Верстальщик [200%] |
| 31 | SEO-оптимизация | 2021-08-25 → 2021-06-02 (-84d) | 2021-08-31 → 2021-06-09 (-83d) |  |  | resources none → Маркетолог; Верстальщик; Программист |
| 32 | Утверждение документации | 2021-10-06 → 2021-07-15 (-83d) | 2021-10-07 → 2021-07-19 (-80d) |  |  | resources none → Верстальщик; Маркетолог |
| 33 | КОНЕЦ IV ЭТАПА | 2021-10-07 → 2021-07-19 (-80d) | 2021-10-07 → 2021-07-19 (-80d) |  |  |  |
| 34 | **ЭТАП V. СОПРОВОЖДЕНИЕ САЙТА** | 2021-10-08 → 2021-07-19 (-81d) | 2021-11-09 → 2021-08-09 (-92d) | 22d → 14.5d |  | resources none → Руководитель проекта от Заказчика; Руководитель проекта от Исполнителя; Секретарь |
| 35 | Провести работы по доработке и устранению недостатков сайта | 2021-10-08 → 2021-07-19 (-81d) | 2021-10-28 → 2021-08-05 (-84d) | 15d → 12.5d | 5d → 0d | resources none → Верстальщик; Программист [200%] |
| 36 | Провести работы по анализу сайта | 2021-10-08 → 2021-07-19 (-81d) | 2021-11-05 → 2021-08-02 (-95d) | 20d → 10d | 0d → 2.5d | resources none → Верстальщик [150%]; Программист; Маркетолог |
| 37 | Утверждение документации | 2021-11-08 → 2021-08-05 (-95d) | 2021-11-09 → 2021-08-09 (-92d) |  |  | resources none → Верстальщик; Маркетолог; Программист |
| 38 | КОНЕЦ V ЭТАПА | 2021-11-09 → 2021-08-09 (-92d) | 2021-11-09 → 2021-08-09 (-92d) |  |  |  |
| 39 | ЗАВЕРШЕНИЕ РАБОТ | 2021-11-09 → 2021-08-09 (-92d) | 2021-11-09 → 2021-08-09 (-92d) |  |  |  |

## Version 4 (saved 2026-03-03, file РС3Б.mpp)

Last finish 2021-08-09 → 2021-08-06 (-3d).

Changed:

| ID | Task | Start | Finish | Duration |
| --- | --- | --- | --- | --- |
| 1 | **РАЗРАБОТКА САЙТА Калякин** |  | 2021-08-09 → 2021-08-06 (-3d) | 111.44d → 110.13d |
| 3 | **ЭТАП I. ПРЕДПРОЕКТНОЕ ИССЛЕДОВАНИЕ** |  | 2021-04-22 → 2021-04-21 (-1d) | 37.5d → 36.19d |
| 14 | Сформировать требования к сайту |  | 2021-04-20 → 2021-04-19 (-1d) | 2.5d → 1.19d |
| 15 | Утвердить документы и внести в библиотеку проекта | 2021-04-20 → 2021-04-19 (-1d) | 2021-04-22 → 2021-04-21 (-1d) |  |
| 16 | КОНЕЦ I ЭТАПА | 2021-04-22 → 2021-04-21 (-1d) | 2021-04-22 → 2021-04-21 (-1d) |  |
| 17 | **ЭТАП II. ПРОЕКТИРОВАНИЕ САЙТА** | 2021-04-22 → 2021-04-21 (-1d) | 2021-05-07 → 2021-05-06 (-1d) |  |
| 18 | Разработать техническое задание | 2021-04-22 → 2021-04-21 (-1d) | 2021-04-27 → 2021-04-26 (-1d) |  |
| 19 | Разработать структуры сайта | 2021-04-27 → 2021-04-26 (-1d) | 2021-05-05 → 2021-05-04 (-1d) |  |
| 20 | Утвердить документы и внести в библиотеку проекта | 2021-05-05 → 2021-05-04 (-1d) | 2021-05-07 → 2021-05-06 (-1d) |  |
| 21 | КОНЕЦ II ЭТАПА | 2021-05-07 → 2021-05-06 (-1d) | 2021-05-07 → 2021-05-06 (-1d) |  |
| 22 | **ЭТАП III. РАЗРАБОТКА САЙТА** | 2021-05-07 → 2021-05-06 (-1d) | 2021-06-02 → 2021-06-01 (-1d) |  |
| 23 | Разработать рабочую документацию | 2021-05-07 → 2021-05-06 (-1d) | 2021-05-24 → 2021-05-21 (-3d) |  |
| 24 | Веб-дизайн сайта | 2021-05-24 → 2021-05-21 (-3d) | 2021-05-25 → 2021-05-24 (-1d) |  |
| 25 | Верстка страниц сайта | 2021-05-25 → 2021-05-24 (-1d) | 2021-05-31 → 2021-05-27 (-4d) |  |
| 26 | Программирование сайта | 2021-05-25 → 2021-05-24 (-1d) | 2021-05-31 → 2021-05-28 (-3d) |  |
| 27 | Тестирование и отладка | 2021-05-31 → 2021-05-28 (-3d) | 2021-06-02 → 2021-06-01 (-1d) |  |
| 28 | КОНЕЦ III ЭТАПА | 2021-06-02 → 2021-06-01 (-1d) | 2021-06-02 → 2021-06-01 (-1d) |  |
| 29 | **ЭТАП IV. ЗАПУСК САЙТА В ЭКСПЛУАТАЦИЮ** | 2021-06-02 → 2021-06-01 (-1d) | 2021-07-19 → 2021-07-16 (-3d) |  |
| 30 | Создание контента | 2021-06-02 → 2021-06-01 (-1d) | 2021-07-15 → 2021-07-14 (-1d) |  |
| 31 | SEO-оптимизация | 2021-06-02 → 2021-06-01 (-1d) | 2021-06-09 → 2021-06-08 (-1d) |  |
| 32 | Утверждение документации | 2021-07-15 → 2021-07-14 (-1d) | 2021-07-19 → 2021-07-16 (-3d) |  |
| 33 | КОНЕЦ IV ЭТАПА | 2021-07-19 → 2021-07-16 (-3d) | 2021-07-19 → 2021-07-16 (-3d) |  |
| 34 | **ЭТАП V. СОПРОВОЖДЕНИЕ САЙТА** | 2021-07-19 → 2021-07-16 (-3d) | 2021-08-09 → 2021-08-06 (-3d) |  |
| 35 | Провести работы по доработке и устранению недостатков сайта | 2021-07-19 → 2021-07-16 (-3d) | 2021-08-05 → 2021-08-04 (-1d) |  |
| 36 | Провести работы по анализу сайта | 2021-07-19 → 2021-07-16 (-3d) | 2021-08-02 → 2021-07-30 (-3d) |  |
| 37 | Утверждение документации | 2021-08-05 → 2021-08-04 (-1d) | 2021-08-09 → 2021-08-06 (-3d) |  |
| 38 | КОНЕЦ V ЭТАПА | 2021-08-09 → 2021-08-06 (-3d) | 2021-08-09 → 2021-08-06 (-3d) |  |
| 39 | ЗАВЕРШЕНИЕ РАБОТ | 2021-08-09 → 2021-08-06 (-3d) | 2021-08-09 → 2021-08-06 (-3d) |  |

## Version 5 (data date 2021-05-31, saved 2026-04-28, file Промежуточный план.mpp)

Last finish 2021-08-06 → 2021-08-25 (+19d). Complete tasks 0 → 14.

Changed:

| ID | Task | Start | Finish | Duration | Complete | Total float | Other |
| --- | --- | --- | --- | --- | --- | --- | --- |
| 1 | **РАЗРАБОТКА САЙТА Калякин** | 2021-03-01 A | 2021-08-06 → 2021-08-25 (+19d) | 110.13d → 123.86d | 0% → 45% |  | baseline start none → 2021-03-01; baseline finish none → 2021-08-25 |
| 2 | НАЧАЛО РАБОТ | 2021-03-01 A | 2021-03-01 A |  | 0% → 100% | 0d → none | baseline start none → 2021-03-01; baseline finish none → 2021-03-01 |
| 3 | **ЭТАП I. ПРЕДПРОЕКТНОЕ ИССЛЕДОВАНИЕ** | 2021-03-01 A | 2021-04-21 → 2021-05-05 (+14d) | 36.19d → 46d | 0% → 99% |  | baseline start none → 2021-03-01; baseline finish none → 2021-05-05 |
| 4 | Разработать план работ по проекту | 2021-03-01 A | 2021-03-29 A |  | 0% → 100% | 0d → none | baseline start none → 2021-03-01; baseline finish none → 2021-03-29 |
| 5 | Разработать предварительный бюджет | 2021-03-01 A | 2021-03-05 → 2021-03-03 A (-2d) | 4.38d → 3d | 0% → 100% | 15.5d → none | baseline start none → 2021-03-01; baseline finish none → 2021-03-03 |
| 6 | Сформировать команду проекта | 2021-03-01 A | 2021-03-05 A |  | 0% → 100% | 15d → none | baseline start none → 2021-03-01; baseline finish none → 2021-03-05 |
| 7 | **Анализ сайтов конкурентов** | 2021-03-30 A | 2021-04-12 → 2021-04-26 A (+14d) | 10d → 20d | 0% → 100% | 0d → none | baseline start none → 2021-03-30; baseline finish none → 2021-04-26 |
| 8 | Сайт 1 | 2021-03-30 A | 2021-04-09 A |  | 0% → 100% | 1d → none | baseline start none → 2021-03-30; baseline finish none → 2021-04-09 |
| 9 | Сайт 2 | 2021-03-30 A | 2021-04-02 → 2021-04-01 A (-1d) | 3.33d → 3d | 0% → 100% | 6.67d → none | baseline start none → 2021-03-30; baseline finish none → 2021-04-01 |
| 10 | Сайт 3 | 2021-03-30 → 2021-03-31 A (+1d) | 2021-04-06 → 2021-04-09 A (+3d) | 5.71d → 5d | 0% → 100% | 4.29d → none | constraint none → start no earlier than 2021-03-31; baseline start none → 2021-03-31; baseline finish none → 2021-04-09 |
| 11 | Сайт 4 | 2021-03-30 → 2021-04-01 A (+2d) | 2021-04-02 → 2021-04-19 A (+17d) | 3.75d → 4d | 0% → 100% | 6.25d → none | constraint none → start no earlier than 2021-04-01; baseline start none → 2021-04-01; baseline finish none → 2021-04-19 |
| 12 | Сайт 5 | 2021-03-30 A | 2021-04-12 → 2021-04-26 A (+14d) |  | 0% → 100% | 0d → none | baseline start none → 2021-03-30; baseline finish none → 2021-04-26 |
| 13 | Разработать модель as-is | 2021-04-13 → 2021-04-27 A (+14d) | 2021-04-15 → 2021-04-28 A (+13d) | 3d → 2d | 0% → 100% | 0d → none | baseline start none → 2021-04-27; baseline finish none → 2021-04-28 |
| 14 | Сформировать требования к сайту | 2021-04-16 → 2021-04-29 A (+13d) | 2021-04-19 → 2021-04-30 A (+11d) | 1.19d → 2d | 0% → 100% | 0d → none | baseline start none → 2021-04-29; baseline finish none → 2021-04-30 |
| 15 | Утвердить документы и внести в библиотеку проекта | 2021-04-19 → 2021-04-30 A (+11d) | 2021-04-21 → 2021-05-05 A (+14d) |  | 0% → 100% | 0d → none | baseline start none → 2021-04-30; baseline finish none → 2021-05-05 |
| 16 | КОНЕЦ I ЭТАПА | 2021-04-21 → 2021-05-05 A (+14d) | 2021-04-21 → 2021-05-05 A (+14d) |  | 0% → 100% | 0d → none | baseline start none → 2021-05-05; baseline finish none → 2021-05-05 |
| 17 | **ЭТАП II. ПРОЕКТИРОВАНИЕ САЙТА** | 2021-04-21 → 2021-05-06 A (+15d) | 2021-05-06 → 2021-05-25 (+19d) | 10d → 13d | 0% → 54% |  | baseline start none → 2021-05-06; baseline finish none → 2021-05-25 |
| 18 | Разработать техническое задание | 2021-04-21 → 2021-05-06 A (+15d) | 2021-04-26 → 2021-05-11 A (+15d) |  | 0% → 100% | 0d → none | baseline start none → 2021-05-06; baseline finish none → 2021-05-11 |
| 19 | Разработать структуры сайта | 2021-04-26 → 2021-05-12 A (+16d) | 2021-05-04 → 2021-05-21 (+17d) | 5d → 8d | 0% → 50% |  | baseline start none → 2021-05-12; baseline finish none → 2021-05-21 |
| 20 | Утвердить документы и внести в библиотеку проекта | 2021-05-04 → 2021-05-24 (+20d) | 2021-05-06 → 2021-05-25 (+19d) |  |  |  | baseline start none → 2021-05-24; baseline finish none → 2021-05-25 |
| 21 | КОНЕЦ II ЭТАПА | 2021-05-06 → 2021-05-25 (+19d) | 2021-05-06 → 2021-05-25 (+19d) |  |  |  | baseline start none → 2021-05-25; baseline finish none → 2021-05-25 |
| 22 | **ЭТАП III. РАЗРАБОТКА САЙТА** | 2021-05-06 → 2021-05-26 (+20d) | 2021-06-01 → 2021-06-22 (+21d) | 17.44d → 18.36d |  |  | baseline start none → 2021-05-26; baseline finish none → 2021-06-22 |
| 23 | Разработать рабочую документацию | 2021-05-06 → 2021-05-26 (+20d) | 2021-05-21 → 2021-06-08 (+18d) |  |  |  | baseline start none → 2021-05-26; baseline finish none → 2021-06-08 |
| 24 | Веб-дизайн сайта | 2021-05-21 → 2021-06-08 (+18d) | 2021-05-24 → 2021-06-10 (+17d) | 1.25d → 1.37d |  |  | baseline start none → 2021-06-08; baseline finish none → 2021-06-10 |
| 25 | Верстка страниц сайта | 2021-05-24 → 2021-06-10 (+17d) | 2021-05-27 → 2021-06-16 (+20d) | 3.64d → 3.13d |  | 0.81d → 2.11d | resources Маркетолог [350%]; Верстальщик; Программист [200%] → Маркетолог [350%]; Верстальщик; Программист; Программист+; baseline start none → 2021-06-10; baseline finish none → 2021-06-16 |
| 26 | Программирование сайта | 2021-05-24 → 2021-06-10 (+17d) | 2021-05-28 → 2021-06-18 (+21d) | 4.44d → 5.24d |  |  | resources Маркетолог [250%]; Верстальщик; Программист [200%] → Маркетолог [250%]; Верстальщик; Программист; Программист+; baseline start none → 2021-06-10; baseline finish none → 2021-06-18 |
| 27 | Тестирование и отладка | 2021-05-28 → 2021-06-18 (+21d) | 2021-06-01 → 2021-06-22 (+21d) |  |  |  | baseline start none → 2021-06-18; baseline finish none → 2021-06-22 |
| 28 | КОНЕЦ III ЭТАПА | 2021-06-01 → 2021-06-22 (+21d) | 2021-06-01 → 2021-06-22 (+21d) |  |  |  | baseline start none → 2021-06-22; baseline finish none → 2021-06-22 |
| 29 | **ЭТАП IV. ЗАПУСК САЙТА В ЭКСПЛУАТАЦИЮ** | 2021-06-01 → 2021-06-22 (+21d) | 2021-07-16 → 2021-08-05 (+20d) |  |  |  | baseline start none → 2021-06-22; baseline finish none → 2021-08-05 |
| 30 | Создание контента | 2021-06-01 → 2021-06-22 (+21d) | 2021-07-14 → 2021-08-03 (+20d) |  |  |  | resources Маркетолог [200%]; Верстальщик [200%] → Маркетолог [200%]; Верстальщик [150%]; baseline start none → 2021-06-22; baseline finish none → 2021-08-03 |
| 31 | SEO-оптимизация | 2021-06-01 → 2021-06-22 (+21d) | 2021-06-08 → 2021-06-29 (+21d) |  |  |  | resources Маркетолог; Верстальщик; Программист → Маркетолог; Верстальщик [50%]; Программист; baseline start none → 2021-06-22; baseline finish none → 2021-06-29 |
| 32 | Утверждение документации | 2021-07-14 → 2021-08-03 (+20d) | 2021-07-16 → 2021-08-05 (+20d) |  |  |  | baseline start none → 2021-08-03; baseline finish none → 2021-08-05 |
| 33 | КОНЕЦ IV ЭТАПА | 2021-07-16 → 2021-08-05 (+20d) | 2021-07-16 → 2021-08-05 (+20d) |  |  |  | baseline start none → 2021-08-05; baseline finish none → 2021-08-05 |
| 34 | **ЭТАП V. СОПРОВОЖДЕНИЕ САЙТА** | 2021-07-16 → 2021-08-05 (+20d) | 2021-08-06 → 2021-08-25 (+19d) |  |  |  | baseline start none → 2021-08-05; baseline finish none → 2021-08-25 |
| 35 | Провести работы по доработке и устранению недостатков сайта | 2021-07-16 → 2021-08-05 (+20d) | 2021-08-04 → 2021-08-23 (+19d) |  |  |  | resources Верстальщик; Программист [200%] → Верстальщик [50%]; Программист; Программист+; baseline start none → 2021-08-05; baseline finish none → 2021-08-23 |
| 36 | Провести работы по анализу сайта | 2021-07-16 → 2021-08-05 (+20d) | 2021-07-30 → 2021-08-19 (+20d) |  |  |  | resources Верстальщик [150%]; Программист; Маркетолог → Верстальщик; Программист; Маркетолог; baseline start none → 2021-08-05; baseline finish none → 2021-08-19 |
| 37 | Утверждение документации | 2021-08-04 → 2021-08-23 (+19d) | 2021-08-06 → 2021-08-25 (+19d) |  |  |  | baseline start none → 2021-08-23; baseline finish none → 2021-08-25 |
| 38 | КОНЕЦ V ЭТАПА | 2021-08-06 → 2021-08-25 (+19d) | 2021-08-06 → 2021-08-25 (+19d) |  |  |  | baseline start none → 2021-08-25; baseline finish none → 2021-08-25 |
| 39 | ЗАВЕРШЕНИЕ РАБОТ | 2021-08-06 → 2021-08-25 (+19d) | 2021-08-06 → 2021-08-25 (+19d) |  |  |  | baseline start none → 2021-08-25; baseline finish none → 2021-08-25 |
